# Календарный план внедрения 1С:ERP + Управление холдингом

Schedule from MS Project, 2025-07-07 to 2026-07-21.

## Calendars

- Стандартный: Mon-Fri 08:00-12:00, 13:00-17:00; Sat-Sun off.

## Resources

| Resource | Group |
| --- | --- |
| Руководитель проекта | Управление |
| Куратор | Управление |
| Архитектор решения | Архитектура |
| Архитектор данных / НСИ | Архитектура |
| Аналитик (финансы) | Анализ |
| Аналитик (производство) | Анализ |
| Аналитик (логистика/закупки) | Анализ |
| Разработчик 1С (старший) | Разработка |
| Разработчик 1С | Разработка |
| Специалист по интеграциям | Разработка |
| Специалист по миграции данных | Данные |
| Тестировщик / QA | Тестирование |
| Технический писатель | Документация |
| Тренер / методолог обучения | Обучение |
| Владелец бизнес-процессов (Заказчик) | Заказчик |
| Эксперт Заказчика (ключевой польз.) | Заказчик |
| Администратор системы | Эксплуатация |

## Schedule

| ID | WBS | Task | Type | Duration | Start | Finish | Predecessors | Total slack | Free slack | Constraint | Resources | Work |
| --- | --- | --- | --- | --- | --- | --- | --- | --- | --- | --- | --- | --- |
| 1 | 1 | Старт проекта | milestone | 0d | 2026-07-01 | 2026-07-01 |  | -477d | 0d | start no earlier than 2026-07-01 |  |  |
| 2 | 2 | **Фаза 1. Инициация и подготовка** |  | 15d | 2026-07-01 | 2026-07-21 |  | -477d | 0d |  |  | 172h |
| 3 | 2.1 | Разработка и утверждение Устава |  | 10d | 2026-07-01 | 2026-07-14 | 1 | -477d | 0d |  | Руководитель проекта; Куратор | 104h |
| 4 | 2.2 | Мобилизация команды, оргструктура |  | 5d | 2026-07-01 | 2026-07-07 | 1 | -467d | 0d |  | Руководитель проекта | 40h |
| 5 | 2.3 | Закрепление экспертов Заказчика (приказ) |  | 5d | 2026-07-15 | 2026-07-21 | 3 | -477d | 0d |  | Руководитель проекта; Владелец бизнес-процессов (Заказчик) | 28h |
| 6 | 2.4 | Веха: проект инициирован | milestone | 0d | 2026-07-21 | 2026-07-21 | 3, 4, 5 | -477d | 0d |  |  |  |
| 7 | 3 | **Фаза 2. Обследование** |  | 25d | 2025-07-28 | 2025-09-01 |  | -220d | 0d |  |  | 1400h |
| 8 | 3.1 | Сбор и анализ требований (воркшопы) |  | 25d | 2025-07-28 | 2025-09-01 | 6 | -257d | 0d | finish no later than 2025-09-01 | Аналитик (финансы); Аналитик (производство); Аналитик (логистика/закупки); Владелец бизнес-процессов (Заказчик); Эксперт Заказчика (ключевой польз.) | 800h |
| 9 | 3.2 | Описание процессов As-Is / To-Be |  | 20d | 2025-08-04 | 2025-09-01 | 6 | -252d | 0d | finish no later than 2025-09-01 | Аналитик (финансы); Аналитик (производство); Аналитик (логистика/закупки); Владелец бизнес-процессов (Заказчик) | 384h |
| 10 | 3.3 | Gap-анализ относительно типового 1С |  | 10d | 2025-08-18 | 2025-09-01 | 8 | -210d | 0d | finish no later than 2025-09-01 | Архитектор решения; Аналитик (финансы); Аналитик (производство) | 120h |
| 11 | 3.4 | Реестр требований + RTM (базовая линия) |  | 8d | 2025-08-20 | 2025-09-01 | 8 | -210d | 0d | finish no later than 2025-09-01 | Аналитик (финансы); Аналитик (производство); Аналитик (логистика/закупки) | 96h |
| 12 | 3.5 | Веха: обследование завершено | milestone | 0d | 2025-09-01 | 2025-09-01 | 9, 10, 11 | -210d | 0d |  |  |  |
| 13 | 4 | **Фаза 3. Проектирование** |  | 25d | 2025-07-28 | 2025-09-01 |  | -185d | 0d |  |  | 1460h |
| 14 | 4.1 | Концепция архитектуры решения |  | 15d | 2025-08-11 | 2025-09-01 | 12 | -195d | 0d | finish no later than 2025-09-01 | Архитектор решения; Архитектор данных / НСИ | 180h |
| 15 | 4.2 | Концепция НСИ / мастер-данных |  | 15d | 2025-08-11 | 2025-09-01 | 12 | -170d | 0d | finish no later than 2025-09-01 | Архитектор данных / НСИ; Владелец бизнес-процессов (Заказчик) | 156h |
| 16 | 4.3 | Концепция миграции данных |  | 15d | 2025-08-11 | 2025-09-01 | 12 | -170d | 0d | finish no later than 2025-09-01 | Специалист по миграции данных; Архитектор данных / НСИ | 180h |
| 17 | 4.4 | Концепция интеграции (ландшафт) |  | 12d | 2025-08-14 | 2025-09-01 | 12 | -195d | 0d | finish no later than 2025-09-01 | Архитектор решения; Специалист по интеграциям | 144h |
| 18 | 4.5 | Разработка ЧТЗ на подсистемы |  | 25d | 2025-07-28 | 2025-09-01 | 14 | -170d | 0d | finish no later than 2025-09-01 | Аналитик (финансы); Аналитик (производство); Аналитик (логистика/закупки); Архитектор решения | 540h |
| 19 | 4.6 | Разработка ЧТЗ на интеграции |  | 25d | 2025-07-28 | 2025-09-01 | 17 | -170d | 0d | finish no later than 2025-09-01 | Специалист по интеграциям; Архитектор решения | 260h |
| 20 | 4.7 | Веха: проектные решения утверждены | milestone | 0d | 2025-09-01 | 2025-09-01 | 15, 16, 18, 19 | -170d | 0d |  |  |  |
| 21 | 5 | **Фаза 4. Разработка и настройка** |  | 40d | 2025-07-07 | 2025-09-01 |  | -130d | 0d |  |  | 2472h |
| 22 | 5.1 | Настройка типового функционала (волна 1) |  | 30d | 2025-07-21 | 2025-09-01 | 20 | -130d | 0d | finish no later than 2025-09-01 | Разработчик 1С (старший); Разработчик 1С | 480h |
| 23 | 5.2 | Доработки конфигурации (волна 1) |  | 35d | 2025-07-14 | 2025-09-01 | 20 | -130d | 0d | finish no later than 2025-09-01 | Разработчик 1С (старший); Разработчик 1С | 840h |
| 24 | 5.3 | Разработка интеграций |  | 40d | 2025-07-07 | 2025-09-01 | 20 | -130d | 0d | finish no later than 2025-09-01 | Специалист по интеграциям; Разработчик 1С | 640h |
| 25 | 5.4 | Настройка и ведение НСИ |  | 30d | 2025-07-21 | 2025-09-01 | 20 | -30d | 0d | finish no later than 2025-09-01 | Архитектор данных / НСИ; Владелец бизнес-процессов (Заказчик) | 312h |
| 26 | 5.5 | Разработка сценариев миграции |  | 25d | 2025-07-28 | 2025-08-29 | 20 | -110d | 0d | start no later than 2025-07-28 | Специалист по миграции данных | 200h |
| 27 | 5.6 | Веха: функционал готов к тестированию | milestone | 0d | 2025-09-01 | 2025-09-01 | 22, 23, 24 | -130d | 0d |  |  |  |

| ID | WBS | Task | Type | Duration | Start | Finish | Predecessors | Total slack | Free slack | Constraint | Resources | Work |
| --- | --- | --- | --- | --- | --- | --- | --- | --- | --- | --- | --- | --- |
| 28 | 6 | **Фаза 5. Тестирование** |  | 20d | 2025-08-04 | 2025-09-01 |  | -125d | 0d |  |  | 1064h |
| 29 | 6.1 | Разработка ПМИ и тест-кейсов |  | 15d | 2025-08-11 | 2025-09-01 | 20 | -130d | 0d | finish no later than 2025-09-01 | Тестировщик / QA; Аналитик (финансы) | 156h |
| 30 | 6.2 | Функциональное тестирование |  | 20d | 2025-08-04 | 2025-09-01 | 27, 29 | -110d | 0d | finish no later than 2025-09-01 | Тестировщик / QA; Разработчик 1С (старший) | 208h |
| 31 | 6.3 | Интеграционное тестирование |  | 15d | 2025-08-11 | 2025-09-01 | 27, 29 | -110d | 0d | finish no later than 2025-09-01 | Тестировщик / QA; Специалист по интеграциям | 180h |
| 32 | 6.4 | Нагрузочное тестирование |  | 10d | 2025-08-18 | 2025-09-01 | 30 | -95d | 0d | finish no later than 2025-09-01 | Тестировщик / QA; Администратор системы | 64h |
| 33 | 6.5 | Пробные миграции + сверка данных |  | 15d | 2025-08-11 | 2025-09-01 | 26, 27 | -95d | 0d | finish no later than 2025-09-01 | Специалист по миграции данных; Архитектор данных / НСИ; Эксперт Заказчика (ключевой польз.) | 216h |
| 34 | 6.6 | Исправление дефектов |  | 15d | 2025-08-11 | 2025-09-01 | 30, 31 | -95d | 0d | finish no later than 2025-09-01 | Разработчик 1С (старший); Разработчик 1С; Специалист по интеграциям | 240h |
| 35 | 6.7 | Веха: испытания пройдены | milestone | 0d | 2025-09-01 | 2025-09-01 | 32, 33, 34 | -95d | 0d |  |  |  |
| 36 | 7 | **Фаза 6. Обучение и опытная эксплуатация** |  | 30d | 2025-07-21 | 2025-09-01 |  | -80d | 0d |  |  | 1540.8h |
| 37 | 7.1 | Подготовка учебных материалов |  | 15d | 2025-08-11 | 2025-09-01 | 27 | -95d | 0d | finish no later than 2025-09-01 | Технический писатель; Тренер / методолог обучения | 180h |
| 38 | 7.2 | Обучение пользователей |  | 20d | 2025-08-04 | 2025-09-01 | 35, 37 | -75d | 0d | finish no later than 2025-09-01 | Тренер / методолог обучения; Эксперт Заказчика (ключевой польз.) | 240h |
| 39 | 7.3 | Промышленная миграция данных |  | 7d | 2025-08-21 | 2025-09-01 | 35 | -75d | 0d | finish no later than 2025-09-01 | Специалист по миграции данных; Архитектор данных / НСИ; Администратор системы | 100.8h |
| 40 | 7.4 | Опытно-промышленная эксплуатация (ОПЭ) |  | 30d | 2025-07-21 | 2025-09-01 | 38, 39 | -45d | 0d | finish no later than 2025-09-01 | Руководитель проекта; Разработчик 1С (старший); Разработчик 1С; Тестировщик / QA; Эксперт Заказчика (ключевой польз.); Администратор системы | 840h |
| 41 | 7.5 | Доработки по итогам ОПЭ |  | 15d | 2025-08-11 | 2025-09-01 | 40 | -30d | 0d | finish no later than 2025-09-01 | Разработчик 1С (старший); Разработчик 1С | 180h |
| 42 | 7.6 | Веха: система готова к ПЭ | milestone | 0d | 2025-09-01 | 2025-09-01 | 41 | -30d | 0d |  |  |  |
| 43 | 8 | **Фаза 7. Промышленная эксплуатация и закрытие** |  | 20d | 2025-08-04 | 2025-09-01 |  | -10d | 0d |  |  | 520h |
| 44 | 8.1 | Перевод в промышленную эксплуатацию |  | 5d | 2025-08-25 | 2025-09-01 | 42 | -25d | 0d | finish no later than 2025-09-01 | Руководитель проекта; Администратор системы | 60h |
| 45 | 8.2 | Стабилизация (Hypercare) |  | 20d | 2025-08-04 | 2025-09-01 | 44 | -20d | 0d | finish no later than 2025-09-01 | Разработчик 1С (старший); Разработчик 1С; Администратор системы; Руководитель проекта | 256h |
| 46 | 8.3 | Подготовка эксплуатационной документации |  | 15d | 2025-08-11 | 2025-09-01 | 42 | -15d | 0d | finish no later than 2025-09-01 | Технический писатель; Администратор системы | 156h |
| 47 | 8.4 | Извлечённые уроки, закрытие проекта |  | 5d | 2025-08-25 | 2025-09-01 | 45, 46 | -5d | 0d | finish no later than 2025-09-01 | Руководитель проекта; Куратор | 48h |
| 48 | 8.5 | Веха: проект завершён | milestone | 0d | 2025-09-01 | 2025-09-01 | 47 | 232d |  |  |  |  |
